Schedule from GanttProject, 2013-04-01 to 2013-09-12.

## Calendars

- Project calendar: Mon-Fri working; Sat-Sun off.

## Resources

| Resource |
| --- |
| Björn (SYSTOPIA) |
| Paul (delius) |
| Olaf (SfE) |
| Xavier (TttP) |
| Joe (JMA Consulting) |

## Schedule

| ID | WBS | Task | Duration | Start | Finish | Predecessors | Complete | Resources |
| --- | --- | --- | --- | --- | --- | --- | --- | --- |
| 1 | 1 | **Definition Feature Requirements** | 17d | 2013-04-01 | 2013-04-23 |  | 100% |  |
| 2 | 1.1 | User Stories & required Features SYSTOPIA | 17d | 2013-04-01 | 2013-04-23 |  | 100% |  |
| 3 | 1.2 | User & required Features delius | 17d | 2013-04-01 | 2013-04-23 |  | 100% |  |
| 4 | 1.3 | User & required Features SfE | 17d | 2013-04-01 | 2013-04-23 |  | 100% |  |
| 5 | 2 | **Data Model** | 28d | 2013-04-01 | 2013-05-08 |  | 68% |  |
| 6 | 2.1 | data model working version 1 | 23d | 2013-04-01 | 2013-05-01 |  | 70% | Paul (delius) |
| 7 | 2.2 | XML & DAO generation SEPA | 5d | 2013-05-02 | 2013-05-08 | 6 | 80% | Paul (delius) |
| 8 | 2.3 | XML & DAO generation CiviBanking | 3d | 2013-05-02 | 2013-05-06 | 6 |  | Björn (SYSTOPIA) |
| 9 | 3 | **API / Interfaces** | 28d | 2013-05-06 | 2013-06-12 |  |  |  |
| 10 | 3.1 | accounts API | 3d | 2013-05-23 | 2013-05-27 | 7 |  | Björn (SYSTOPIA); Xavier (TttP) |
| 11 | 3.2 | payments / statements API | 15d | 2013-05-23 | 2013-06-12 | 7 |  | Björn (SYSTOPIA); Xavier (TttP) |
| 12 | 3.3 | SEPA API? (mandates, transactions, modes...) | 1d | 2013-05-23 | 2013-05-23 | 7 |  | Olaf (SfE) |
| 13 | 3.4 | import / export plugin interfaces | 5d | 2013-05-06 | 2013-05-10 |  |  | Björn (SYSTOPIA) |
| 14 | 3.5 | matcher plugin interfaces | 5d | 2013-05-06 | 2013-05-10 |  |  | Björn (SYSTOPIA) |
| 15 | 4 | **CiviBanking** | 119d | 2013-04-01 | 2013-09-12 |  | 12% |  |
| 16 | 4.1 | design mockups | 12d | 2013-04-01 | 2013-04-16 |  | 100% |  |
| 17 | 4.2 | Payment Importer | 15d | 2013-05-24 | 2013-06-13 | 12 |  | Björn (SYSTOPIA) |
| 18 | 4.3 | Payment Manager | 10d | 2013-06-14 | 2013-06-27 | 11, 17 |  | Björn (SYSTOPIA) |
| 19 | 4.4 | Matching engine | 10d | 2013-06-28 | 2013-07-11 | 11, 18 |  | Björn (SYSTOPIA) |
| 20 | 4.5 | Suggestion Workbench | 20d | 2013-07-12 | 2013-08-08 | 11, 14, 19 |  | Björn (SYSTOPIA) |
| 21 | 4.6 | Statement Manager | 15d | 2013-08-09 | 2013-08-29 | 11, 20 |  | Björn (SYSTOPIA) |
| 22 | 4.7 | Payment Exporter | 10d | 2013-08-30 | 2013-09-12 | 12, 21 |  | Björn (SYSTOPIA) |
| 23 | 4.8 | BankAccount Manager | 15d | 2013-05-28 | 2013-06-17 | 10 |  | Olaf (SfE) |
| 24 | 5 | **CiviSEPA** | 15d | 2013-05-24 | 2013-06-13 |  |  |  |
| 25 | 5.1 | mandate manager | 1d | 2013-06-13 | 2013-06-13 | 11, 12 |  | Olaf (SfE) |
| 26 | 5.2 | Mandate Documenter | 1d | 2013-05-24 | 2013-05-24 | 12 |  | Olaf (SfE) |
| 27 | 5.3 | SDD Payment Processor | 1d | 2013-05-24 | 2013-05-24 | 12 |  | Olaf (SfE) |
| 28 | 5.4 | Mandate Import | 1d | 2013-05-24 | 2013-05-24 | 12 |  | Olaf (SfE) |
| 29 | 5.5 | Batch Manager | 1d | 2013-05-24 | 2013-05-24 | 12 |  | Olaf (SfE) |
| 30 | 5.6 | XML Exporter | 1d | 2013-05-24 | 2013-05-24 | 12 |  | Olaf (SfE) |
| 31 | 6 | Code Sprint | 2d | 2013-06-13 | 2013-06-14 | 7, 9 |  |  |
